# App_trabalho_GP

Schedule from MS Project, 2021-12-17 to 2022-07-06, status date 2021-12-27, A marks actual dates.

## Calendars

- Projeto aborla: Mon-Fri 08:00-12:00, 13:00-17:00; Sat-Sun off. Exceptions (off unless hours are given): 2021-12-20 to 2022-06-30 08:00-12:00, 13:00-17:00 (Dias de trabalho, recurring), 2021-12-24 (feriado, recurring), 2022-01-02 (dia dado referente fim de ano), 2022-04-15 (feriado), 2022-04-25 (feriado), 2022-06-10 (feriado), 2022-06-16 (feriado).

## Resources

| Resource |
| --- |
| Programador Front End 1 |
| Programador Front End 2 |
| Programador Back End |
| QA Tester |
| Estagiario full stack |
| Gestor do Negocio |
| Team manager |
| Firebase |
| Licença google play store developer |
| Licença Apple developer |
| Aluguer de instalações para desenvolvimento |
| serviços internet e telefone |
| material escritorio |
| Gestor Marketing |
| Assistente administrativa |
| Gestor Projeto |
| Designer gráfico |

## Schedule

| ID | WBS | Task | Type | Duration | Start | Finish | Predecessors | Complete | Remaining | Baseline start | Baseline finish | Baseline duration | Total slack | Resources | Work | Actual work | % Calculado |
| --- | --- | --- | --- | --- | --- | --- | --- | --- | --- | --- | --- | --- | --- | --- | --- | --- | --- |
| 1 | 1 | **Projeto Final - APP** |  | 139d? | 2021-12-17 A | 2022-07-06 |  | 4% | 133d? | 2021-12-17 | 2022-07-06 | 139d? | 0d |  | 3056h | 288h |  |
| 2 | 1.1 | **Definição de Requisitos** |  | 11d | 2021-12-17 A | 2022-01-03 |  | 55% | 5d | 2021-12-17 | 2022-01-03 | 11d | 0d |  | 416h | 288h |  |
| 3 | 1.1.1 | Reunião informal da equipa |  | 6d | 2021-12-17 A | 2021-12-27 A |  | 100% |  | 2021-12-17 | 2021-12-27 | 6d |  | Programador Back End; Programador Front End 1; Programador Front End 2; QA Tester; Gestor do Negocio; Team manager | 288h | 288h | 100% |
| 4 | 1.1.2 | Estudo de mercado e posicionamento do projeto neste mercado |  | 2d | 2021-12-28 | 2021-12-29 | 3 |  |  | 2021-12-28 | 2021-12-29 | 2d | 0d | Assistente administrativa; Gestor Marketing; Gestor do Negocio | 48h |  | 0% |
| 5 | 1.1.3 | Definição tecnologias de desenvolvimento |  | 1d | 2021-12-30 | 2021-12-30 | 4 |  |  | 2021-12-30 | 2021-12-30 | 1d | 0d | Gestor do Negocio; Team manager | 16h |  | 0% |
| 6 | 1.1.4 | Definição dos recursos humanos afetos ao projeto |  | 1d | 2021-12-31 | 2021-12-31 | 5 |  |  | 2021-12-31 | 2021-12-31 | 1d | 0d | Gestor do Negocio; Team manager; Gestor Projeto | 24h |  | 0% |
| 7 | 1.1.5 | Validação e reunião final de consolidação dos requesitos |  | 1d | 2022-01-03 | 2022-01-03 | 6 |  |  | 2022-01-03 | 2022-01-03 | 1d | 0d | Gestor Marketing; Programador Back End; Programador Front End 1; Gestor do Negocio; Team manager | 40h |  | 0% |
| 8 | 1.1.6 | Encerramento / Reunião | milestone | 0d | 2022-01-03 | 2022-01-03 | 7 |  |  | 2022-01-03 | 2022-01-03 | 0d | 0d |  |  |  | 0% |
| 9 | 1.2 | **Análise de sistemas** |  | 11d | 2022-01-04 | 2022-01-18 |  |  |  | 2022-01-04 | 2022-01-18 | 11d | 0d |  | 144h |  |  |
| 10 | 1.2.1 | Estado da Arte |  | 1d | 2022-01-04 | 2022-01-04 | 8 |  |  | 2022-01-04 | 2022-01-04 | 1d | 0d | Gestor do Negocio; Team manager | 16h |  | 0% |
| 11 | 1.2.2 | Construção e documentação aspetos estáticos do sistema (Diagramas) |  | 1d | 2022-01-05 | 2022-01-05 | 10 |  |  | 2022-01-05 | 2022-01-05 | 1d | 0d | Gestor do Negocio; Team manager | 16h |  | 0% |
| 12 | 1.2.3 | Fluxo dos processos e funcionalidades nos demais casos de utilização da aplicação |  | 3d | 2022-01-06 | 2022-01-10 | 11 |  |  | 2022-01-06 | 2022-01-10 | 3d | 0d | Gestor do Negocio; Team manager | 48h |  | 0% |
| 13 | 1.2.4 | Wireframes |  | 4d | 2022-01-11 | 2022-01-14 | 12 |  |  | 2022-01-11 | 2022-01-14 | 4d | 0d | Designer gráfico | 32h |  | 0% |
| 14 | 1.2.5 | consolidação dos requesitos |  | 2d | 2022-01-17 | 2022-01-18 | 13 |  |  | 2022-01-17 | 2022-01-18 | 2d | 0d | Gestor do Negocio; Team manager | 32h |  | 0% |
| 15 | 1.2.6 | Encerramento final | milestone | 0d | 2022-01-18 | 2022-01-18 | 14 |  |  | 2022-01-18 | 2022-01-18 | 0d | 0d |  |  |  | 0% |
| 16 | 1.3 | **Planeamento** |  | 10d? | 2022-01-19 | 2022-02-01 |  |  |  | 2022-01-19 | 2022-02-01 | 10d? | 0d |  | 136h |  |  |
| 17 | 1.3.1 | Ambito Global do Projeto |  | 1d | 2022-01-19 | 2022-01-19 | 15 |  |  | 2022-01-19 | 2022-01-19 | 1d | 0d | Gestor Marketing; Gestor do Negocio; Team manager | 24h |  | 0% |
| 18 | 1.3.2 | Definir linha temporal para desenvolvimento |  | 1d | 2022-01-20 | 2022-01-20 | 17 |  |  | 2022-01-20 | 2022-01-20 | 1d | 0d | Gestor do Negocio; Team manager | 16h |  | 0% |
| 19 | 1.3.3 | Distribuição tarefas de desenvolvimento pelos recusrsos definidos |  | 2d | 2022-01-21 | 2022-01-24 | 18 |  |  | 2022-01-21 | 2022-01-24 | 2d | 0d | Gestor do Negocio; Team manager | 32h |  | 0% |
| 20 | 1.3.4 | Definição plano estratégico e final de Marketing |  | 4d | 2022-01-25 | 2022-01-28 | 19 |  |  | 2022-01-25 | 2022-01-28 | 4d | 0d | Gestor Marketing | 32h |  | 0% |
| 21 | 1.3.5 | Entrega de plano estratégico |  | 1d? | 2022-01-31 | 2022-01-31 | 20 |  |  | 2022-01-31 | 2022-01-31 | 1d? | 0d | Gestor Marketing | 8h |  | 0% |
| 22 | 1.3.6 | Validação e consolidação planeamento |  | 1d | 2022-02-01 | 2022-02-01 | 21 |  |  | 2022-02-01 | 2022-02-01 | 1d | 0d | Gestor Marketing; Gestor do Negocio; Team manager | 24h |  | 0% |
| 23 | 1.3.7 | Encerramento | milestone | 0d | 2022-02-01 | 2022-02-01 | 22 |  |  | 2022-02-01 | 2022-02-01 | 0d | 0d |  |  |  | 0% |
| 24 | 1.4 | **Desenho Interface** |  | 9d | 2022-02-02 | 2022-02-14 |  |  |  | 2022-02-02 | 2022-02-14 | 9d | 0d |  | 192h |  |  |
| 25 | 1.4.1 | Desenhar Logotipo |  | 1d | 2022-02-02 | 2022-02-02 | 23 |  |  | 2022-02-02 | 2022-02-02 | 1d | 0d | Designer gráfico | 8h |  | 0% |
| 26 | 1.4.2 | Definição componente grafica e estrutura layouts |  | 5d | 2022-02-03 | 2022-02-09 | 25 |  |  | 2022-02-03 | 2022-02-09 | 5d | 0d | Designer gráfico; Gestor do Negocio; Team manager | 120h |  | 0% |
| 27 | 1.4.3 | Validações |  | 1d | 2022-02-10 | 2022-02-10 | 26 |  |  | 2022-02-10 | 2022-02-10 | 1d | 0d | Gestor do Negocio; Team manager | 16h |  | 0% |
| 28 | 1.4.4 | Reunião de refactorizacao dos requisitos |  | 2d | 2022-02-11 | 2022-02-14 | 27 |  |  | 2022-02-11 | 2022-02-14 | 2d | 0d | Designer gráfico; Gestor do Negocio; Team manager | 48h |  | 0% |
| 29 | 1.4.5 | Encerramento | milestone | 0d | 2022-02-14 | 2022-02-14 | 28 |  |  | 2022-02-14 | 2022-02-14 | 0d | 0d |  |  |  | 0% |

| ID | WBS | Task | Type | Duration | Start | Finish | Predecessors | Baseline start | Baseline finish | Baseline duration | Total slack | Resources | Work | % Calculado |
| --- | --- | --- | --- | --- | --- | --- | --- | --- | --- | --- | --- | --- | --- | --- |
| 30 | 1.5 | **Experiencia e interação do utilizador** |  | 10d | 2022-02-15 | 2022-02-28 |  | 2022-02-15 | 2022-02-28 | 10d | 0d |  | 80h |  |
| 31 | 1.5.1 | Análise |  | 5d | 2022-02-22 | 2022-02-28 | 29 | 2022-02-22 | 2022-02-28 | 5d | 0d | Designer gráfico | 40h | 0% |
| 32 | 1.5.2 | Otimizar e aprimorar os componentes do design da APP |  | 5d | 2022-02-15 | 2022-02-21 | 29 | 2022-02-15 | 2022-02-21 | 5d | 5d | Designer gráfico | 40h | 0% |
| 33 | 1.5.3 | Encerramento | milestone | 0d | 2022-02-28 | 2022-02-28 | 31, 32 | 2022-02-28 | 2022-02-28 | 0d | 0d |  |  | 0% |
| 34 | 1.6 | **Desenvolvimento** |  | 77d | 2022-03-01 | 2022-06-21 |  | 2022-03-01 | 2022-06-21 | 77d | 0d |  | 1984h |  |
| 35 | 1.6.1 | Integração com BD desenvolvida em projeto a parte |  | 5d | 2022-03-01 | 2022-03-07 | 33 | 2022-03-01 | 2022-03-07 | 5d | 0d | Programador Back End; Programador Front End 1; Programador Front End 2 | 120h | 0% |
| 36 | 1.6.2 | Desenvolvimento de todas as páginas do projeto |  | 45d | 2022-03-08 | 2022-05-11 | 35 | 2022-03-08 | 2022-05-11 | 45d | 0d | Programador Back End; Programador Front End 1; Programador Front End 2 | 1080h | 0% |
| 37 | 1.6.3 | Desenvolvimento layouts interface |  | 15d | 2022-05-12 | 2022-06-01 | 36 | 2022-05-12 | 2022-06-01 | 15d | 0d | Programador Back End; Programador Front End 1; Programador Front End 2 | 360h | 0% |
| 38 | 1.6.4 | Verificações |  | 7d | 2022-06-02 | 2022-06-13 | 37 | 2022-06-02 | 2022-06-13 | 7d | 0d | Programador Back End; Programador Front End 1; Programador Front End 2; Team manager | 224h | 0% |
| 39 | 1.6.5 | Validação global em ambiente desenvolvimento |  | 5d | 2022-06-14 | 2022-06-21 | 38 | 2022-06-14 | 2022-06-21 | 5d | 0d | Programador Back End; Programador Front End 1; Programador Front End 2; Team manager; Gestor Projeto | 200h | 0% |
| 40 | 1.6.6 | Encerramento | milestone | 0d | 2022-06-21 | 2022-06-21 | 39 | 2022-06-21 | 2022-06-21 | 0d | 0d |  |  | 0% |
| 41 | 1.7 | **Testing** |  | 7d | 2022-06-22 | 2022-06-30 |  | 2022-06-22 | 2022-06-30 | 7d | 0d |  | 56h |  |
| 42 | 1.7.1 | Testes em ambiente pré produtivo |  | 5d | 2022-06-22 | 2022-06-28 | 40 | 2022-06-22 | 2022-06-28 | 5d | 0d | QA Tester | 40h | 0% |
| 43 | 1.7.2 | Testes em ambiente produtivo |  | 2d | 2022-06-29 | 2022-06-30 | 42 | 2022-06-29 | 2022-06-30 | 2d | 0d | QA Tester | 16h | 0% |
| 44 | 1.7.3 | Encerramento | milestone | 0d | 2022-06-30 | 2022-06-30 | 43 | 2022-06-30 | 2022-06-30 | 0d | 0d |  |  | 0% |
| 45 | 1.8 | **Implementação APP** |  | 4d | 2022-07-01 | 2022-07-06 |  | 2022-07-01 | 2022-07-06 | 4d | 0d |  | 48h |  |
| 46 | 1.8.1 | Publicar APP |  | 1d | 2022-07-01 | 2022-07-01 | 44 | 2022-07-01 | 2022-07-01 | 1d | 0d | Gestor do Negocio; Team manager | 16h | 0% |
| 47 | 1.8.2 | Colocar APP em produção |  | 2d | 2022-07-04 | 2022-07-05 | 46 | 2022-07-04 | 2022-07-05 | 2d | 0d | Gestor do Negocio; Team manager | 32h | 0% |
| 48 | 1.8.3 | Encerramento |  | 1d | 2022-07-06 | 2022-07-06 | 47 | 2022-07-06 | 2022-07-06 | 1d | 0d |  |  | 0% |
