# Site_trabalho_GP

Schedule from MS Project, 2022-01-03 to 2022-07-15, status date 2022-01-03, costs in €.

## Calendars

- Projeto Aborla WebSite: Mon-Fri 08:00-12:00, 13:00-17:00; Sat-Sun off. Exceptions (off unless hours are given): 2022-01-03 to 2022-06-30 08:00-12:00, 13:00-17:00 (Dias de trabalho, recurring), 2022-04-15 (feriado), 2022-04-25 (feriado), 2022-06-10 (feriado), 2022-06-16 (feriado).

## Resources

| Resource | Rate | Cost per use |
| --- | --- | --- |
| Programador Front End 1 | 10 |  |
| Programador Front End 2 | 10 |  |
| Programador Back End | 13 |  |
| QA Tester | 8 |  |
| Estagiario full stack | 6 |  |
| Team manager | 15 |  |
| Firebase |  |  |
| Dominio |  |  |
| Aluguer de instalações para desenvolvimento |  |  |
| Serviço internet e telefone |  |  |
| material de escritorio |  | 10000 |
| Assistente administrativa | 8 |  |
| Gestor Projeto | 14 |  |
| Designer gráfico | 11 |  |
| Gestor do Negocio | 15 |  |
| Gestor Marketing | 10 |  |

## Schedule

| ID | WBS | Task | Type | Duration | Start | Finish | Predecessors | Baseline start | Baseline finish | Baseline duration | Total slack | Constraint | Resources | Work | Cost | Baseline cost | Evolução Projeto |
| --- | --- | --- | --- | --- | --- | --- | --- | --- | --- | --- | --- | --- | --- | --- | --- | --- | --- |
| 1 | 1 | **Projeto Final - Web Site** |  | 136d? | 2022-01-03 | 2022-07-15 |  | 2022-01-03 | 2022-07-15 | 136d? |  |  |  | 3000h | 47,352 | 47,352 |  |
| 2 | 1.1 | **Definição de Requisitos** |  | 11d | 2022-01-03 | 2022-01-17 |  | 2022-01-03 | 2022-01-17 | 11d | 0d |  | Aluguer de instalações para desenvolvimento [0.1%]; material de escritorio; Serviço internet e telefone [0.1%] | 416h | 17,532 | 17,532 |  |
| 3 | 1.1.1 | Reunião informal da equipa |  | 6d | 2022-01-03 | 2022-01-10 |  | 2022-01-03 | 2022-01-10 | 6d | 0d | start no earlier than 2022-01-03 | Programador Back End; Programador Front End 1; Programador Front End 2; QA Tester; Gestor do Negocio; Team manager | 288h | 3,408 | 3,408 | 16% |
| 4 | 1.1.2 | Estudo de mercado e posicionamento do projeto neste mercado |  | 2d | 2022-01-11 | 2022-01-12 | 3 | 2022-01-11 | 2022-01-12 | 2d | 0d |  | Assistente administrativa; Gestor Marketing; Gestor do Negocio | 48h | 528 | 528 | 0% |
| 5 | 1.1.3 | Definição tecnologias de desenvolvimento |  | 1d | 2022-01-13 | 2022-01-13 | 4 | 2022-01-13 | 2022-01-13 | 1d | 0d |  | Gestor do Negocio; Team manager | 16h | 240 | 240 | 0% |
| 6 | 1.1.4 | Definição dos recursos humanos afetos ao projeto |  | 1d | 2022-01-14 | 2022-01-14 | 5 | 2022-01-14 | 2022-01-14 | 1d | 0d |  | Gestor do Negocio; Team manager; Gestor Projeto | 24h | 352 | 352 | 0% |
| 7 | 1.1.5 | Validação e reunião final de consolidação dos requesitos |  | 1d | 2022-01-17 | 2022-01-17 | 6 | 2022-01-17 | 2022-01-17 | 1d | 0d |  | Gestor Marketing; Programador Back End; Programador Front End 1; Gestor do Negocio; Team manager | 40h | 504 | 504 | 0% |
| 8 | 1.1.6 | Encerramento / Reunião | milestone | 0d | 2022-01-17 | 2022-01-17 | 7 | 2022-01-17 | 2022-01-17 | 0d | 0d |  | Gestor do Negocio; Gestor Marketing; Gestor Projeto |  |  |  | 0% |
| 9 | 1.2 | **Análise de sistemas** |  | 9d? | 2022-01-18 | 2022-01-28 |  | 2022-01-18 | 2022-01-28 | 9d? | 0d |  |  | 168h | 1,968 | 1,968 |  |
| 10 | 1.2.1 | Estado da Arte |  | 1d | 2022-01-18 | 2022-01-18 | 8 | 2022-01-18 | 2022-01-18 | 1d | 0d |  | Gestor Marketing; QA Tester | 16h | 144 | 144 | 0% |
| 11 | 1.2.2 | Construção e documentação aspetos estáticos do sistema (Diagramas) |  | 1d | 2022-01-19 | 2022-01-19 | 10 | 2022-01-19 | 2022-01-19 | 1d | 0d |  | Gestor do Negocio; Team manager | 16h | 240 | 240 | 0% |
| 12 | 1.2.3 | Fluxo dos processos e funcionalidades nos demais casos de utilização da aplicação |  | 2d | 2022-01-20 | 2022-01-21 | 11 | 2022-01-20 | 2022-01-21 | 2d | 0d |  | Team manager; Programador Back End; Programador Front End 1 | 48h | 608 | 608 | 0% |
| 13 | 1.2.4 | Wireframes |  | 4d | 2022-01-24 | 2022-01-27 | 12 | 2022-01-24 | 2022-01-27 | 4d | 0d |  | Designer gráfico; Programador Front End 2 | 64h | 672 | 672 | 0% |
| 14 | 1.2.5 | Consolidação dos requesitos |  | 1d? | 2022-01-28 | 2022-01-28 | 13 | 2022-01-28 | 2022-01-28 | 1d? | 0d |  | Team manager; Programador Back End; Programador Front End 1 | 24h | 304 | 304 | 0% |
| 15 | 1.2.6 | Encerramento | milestone | 0d | 2022-01-28 | 2022-01-28 | 14 | 2022-01-28 | 2022-01-28 | 0d | 0d |  | Gestor do Negocio; Gestor Projeto |  |  |  | 0% |
| 16 | 1.3 | **Planeamento** |  | 10d? | 2022-01-31 | 2022-02-11 |  | 2022-01-31 | 2022-02-11 | 10d? | 0d |  |  | 152h | 1,944 | 1,944 |  |
| 17 | 1.3.1 | Ambito Global do Projeto |  | 1d | 2022-01-31 | 2022-01-31 | 15 | 2022-01-31 | 2022-01-31 | 1d | 0d |  | Gestor Marketing; Gestor do Negocio; Team manager; Programador Back End; Programador Front End 1 | 40h | 504 | 504 | 0% |
| 18 | 1.3.2 | Definir linha temporal para desenvolvimento |  | 1d | 2022-02-01 | 2022-02-01 | 17 | 2022-02-01 | 2022-02-01 | 1d | 0d |  | Gestor do Negocio; Team manager | 16h | 240 | 240 | 0% |
| 19 | 1.3.3 | Distribuição tarefas de desenvolvimento pelos recusrsos definidos |  | 2d | 2022-02-02 | 2022-02-03 | 18 | 2022-02-02 | 2022-02-03 | 2d | 0d |  | Gestor do Negocio; Team manager | 32h | 480 | 480 | 0% |
| 20 | 1.3.4 | Definição plano estratégico e final de Marketing |  | 4d | 2022-02-04 | 2022-02-09 | 19 | 2022-02-04 | 2022-02-09 | 4d | 0d |  | Gestor Marketing | 32h | 320 | 320 | 0% |
| 21 | 1.3.5 | Entrega de plano estratégico |  | 1d? | 2022-02-10 | 2022-02-10 | 20 | 2022-02-10 | 2022-02-10 | 1d? | 0d |  | Gestor Marketing | 8h | 80 | 80 | 0% |
| 22 | 1.3.6 | Validação e consolidação planeamento |  | 1d | 2022-02-11 | 2022-02-11 | 21 | 2022-02-11 | 2022-02-11 | 1d | 0d |  | Gestor Marketing; Gestor do Negocio; Team manager | 24h | 320 | 320 | 0% |
| 23 | 1.3.7 | Encerramento | milestone | 0d | 2022-02-11 | 2022-02-11 | 22 | 2022-02-11 | 2022-02-11 | 0d | 0d |  | Gestor do Negocio; Gestor Marketing; Gestor Projeto |  |  |  | 0% |
| 24 | 1.4 | **Desenho Interface** |  | 9d | 2022-02-14 | 2022-02-24 |  | 2022-02-14 | 2022-02-24 | 9d | 0d |  |  | 248h | 2,816 | 2,816 |  |
| 25 | 1.4.1 | Desenhar Logotipo |  | 1d | 2022-02-14 | 2022-02-14 | 23 | 2022-02-14 | 2022-02-14 | 1d | 0d |  | Designer gráfico; Gestor Marketing | 16h | 168 | 168 | 0% |
| 26 | 1.4.2 | Definição componente grafica e estrutura Mockups |  | 5d | 2022-02-15 | 2022-02-21 | 25 | 2022-02-15 | 2022-02-21 | 5d | 0d |  | Designer gráfico; Team manager; Programador Front End 1; Programador Front End 2 | 160h | 1,840 | 1,840 | 0% |
| 27 | 1.4.3 | Validações |  | 1d | 2022-02-22 | 2022-02-22 | 26 | 2022-02-22 | 2022-02-22 | 1d | 0d |  | Team manager; Gestor Marketing; Gestor Projeto | 24h | 312 | 312 | 0% |
| 28 | 1.4.4 | Reunião de refactorizacao dos requisitos |  | 2d | 2022-02-23 | 2022-02-24 | 27 | 2022-02-23 | 2022-02-24 | 2d | 0d |  | Designer gráfico; Programador Front End 1; Programador Front End 2 | 48h | 496 | 496 | 0% |
| 29 | 1.4.5 | Encerramento | milestone | 0d | 2022-02-24 | 2022-02-24 | 28 | 2022-02-24 | 2022-02-24 | 0d | 0d |  | Gestor do Negocio; Gestor Marketing; Gestor Projeto |  |  |  | 0% |

| ID | WBS | Task | Type | Duration | Start | Finish | Predecessors | Baseline start | Baseline finish | Baseline duration | Total slack | Resources | Work | Cost | Baseline cost | Evolução Projeto |
| --- | --- | --- | --- | --- | --- | --- | --- | --- | --- | --- | --- | --- | --- | --- | --- | --- |
| 30 | 1.5 | **Experiencia e interação do utilizador** |  | 10d | 2022-02-25 | 2022-03-10 |  | 2022-02-25 | 2022-03-10 | 10d | 0d |  | 160h | 1,520 | 1,520 |  |
| 31 | 1.5.1 | Análise |  | 5d | 2022-02-25 | 2022-03-03 | 29 | 2022-02-25 | 2022-03-03 | 5d | 0d | Designer gráfico; QA Tester | 80h | 760 | 760 | 0% |
| 32 | 1.5.2 | Otimizar e aprimorar os componentes do design do Site |  | 5d | 2022-03-04 | 2022-03-10 | 31 | 2022-03-04 | 2022-03-10 | 5d | 0d | Designer gráfico; QA Tester | 80h | 760 | 760 | 0% |
| 33 | 1.5.3 | Encerramento | milestone | 0d | 2022-03-10 | 2022-03-10 | 31, 32 | 2022-03-10 | 2022-03-10 | 0d | 0d | Gestor do Negocio; Gestor Marketing; Gestor Projeto |  |  |  | 0% |
| 34 | 1.6 | **Desenvolvimento** |  | 77d | 2022-03-11 | 2022-07-01 |  | 2022-03-11 | 2022-07-01 | 77d | 0d | Dominio [0.1%]; Firebase [0.1%] | 1664h | 19,428 | 19,428 |  |
| 35 | 1.6.1 | Integração com BD desenvolvida em projeto a parte |  | 5d | 2022-03-11 | 2022-03-17 | 33 | 2022-03-11 | 2022-03-17 | 5d | 0d | Programador Back End; Team manager | 80h | 1,120 | 1,120 | 0% |
| 36 | 1.6.2 | Desenvolvimento de todas as páginas do projeto |  | 45d | 2022-03-18 | 2022-05-23 | 35 | 2022-03-18 | 2022-05-23 | 45d | 0d | Programador Back End; Programador Front End 1; Programador Front End 2 | 1080h | 11,880 | 11,880 | 0% |
| 37 | 1.6.3 | Desenvolvimento layouts interface |  | 15d | 2022-05-24 | 2022-06-14 | 36 | 2022-05-24 | 2022-06-14 | 15d | 0d | Programador Front End 1; Programador Front End 2 | 240h | 2,400 | 2,400 | 0% |
| 38 | 1.6.4 | Verificações |  | 7d | 2022-06-15 | 2022-06-24 | 37 | 2022-06-15 | 2022-06-24 | 7d | 0d | Programador Back End; Programador Front End 1; Programador Front End 2; Team manager | 224h | 2,688 | 2,688 | 0% |
| 39 | 1.6.5 | Validação global em ambiente desenvolvimento |  | 5d | 2022-06-27 | 2022-07-01 | 38 | 2022-06-27 | 2022-07-01 | 5d | 0d | QA Tester | 40h | 320 | 320 | 0% |
| 40 | 1.6.6 | Encerramento | milestone | 0d | 2022-07-01 | 2022-07-01 | 39 | 2022-07-01 | 2022-07-01 | 0d | 0d | Gestor do Negocio; Gestor Marketing; Gestor Projeto |  |  |  | 0% |
| 41 | 1.7 | **Testing** |  | 7d | 2022-07-04 | 2022-07-12 |  | 2022-07-04 | 2022-07-12 | 7d | 0d |  | 136h | 1,368 | 1,368 |  |
| 42 | 1.7.1 | Testes em ambiente pré produtivo |  | 5d | 2022-07-04 | 2022-07-08 | 40 | 2022-07-04 | 2022-07-08 | 5d | 0d | QA Tester; Programador Back End; Programador Front End 1 | 120h | 1,240 | 1,240 | 0% |
| 43 | 1.7.2 | Testes em ambiente produtivo |  | 2d | 2022-07-11 | 2022-07-12 | 42 | 2022-07-11 | 2022-07-12 | 2d | 0d | QA Tester | 16h | 128 | 128 | 0% |
| 44 | 1.7.3 | Encerramento | milestone | 0d | 2022-07-12 | 2022-07-12 | 43 | 2022-07-12 | 2022-07-12 | 0d | 0d | Gestor do Negocio; Gestor Marketing; Gestor Projeto |  |  |  | 0% |
| 45 | 1.8 | **Implementação WEB SITE** |  | 3d? | 2022-07-13 | 2022-07-15 |  | 2022-07-13 | 2022-07-15 | 3d? | 0d |  | 56h | 776 | 776 |  |
| 46 | 1.8.1 | Publicar Site |  | 1d? | 2022-07-13 | 2022-07-13 | 44 | 2022-07-13 | 2022-07-13 | 1d? | 0d | Team manager | 8h | 120 | 120 | 0% |
| 47 | 1.8.2 | Colocar site em produção |  | 1d | 2022-07-14 | 2022-07-14 | 46 | 2022-07-14 | 2022-07-14 | 1d | 0d | Team manager; Programador Back End | 16h | 224 | 224 | 0% |
| 48 | 1.8.3 | Encerramento |  | 1d | 2022-07-15 | 2022-07-15 | 47 | 2022-07-15 | 2022-07-15 | 1d | 0d | Gestor do Negocio; Gestor Marketing; Gestor Projeto; Team manager | 32h | 432 | 432 | 0% |
