# daniel-carneiro-teste

Schedule from MS Project, 2022-01-03 to 2022-10-03, status date 2022-01-14, costs in £, A marks actual dates.

## Calendars

- Calendario-teste: Mon-Fri 08:00-13:00, 14:00-18:00; Sat-Sun off. Exceptions (off unless hours are given): 2022-01-03 to 2022-08-02 08:00-13:00, 14:00-18:00 (Dias de trabalho, recurring), 2022-03-01 (Carnaval), 2022-04-15 (Sexta feira santa), 2022-04-17 (Pascoa), 2022-04-25 (Dia da liberdade), 2022-05-01 (Dia do trabalhador).

## Resources

| Resource | Rate |
| --- | --- |
| Gestor topo |  |
| Gestor do projeto | 18.75 |
| Coordenador SI | 18.75 |
| Coordenador TI | 18.75 |
| Consultor | 25 |
| Equipa do projeto | 6.25 |
| Analista | 18.75 |
| Servidor Base Dados | 10000 |
| Sistema Backup | 2500 |
| Servidor Web | 10000 |
| Sistema Gestao de Base de Dados | 15000 |

## Schedule

| ID | WBS | Task | Duration | Start | Finish | Predecessors | Complete | Remaining | Baseline start | Baseline finish | Baseline duration | Total slack | Free slack | Constraint | Resources | Work | Actual work | Cost | Baseline cost | Actual cost |
| --- | --- | --- | --- | --- | --- | --- | --- | --- | --- | --- | --- | --- | --- | --- | --- | --- | --- | --- | --- | --- |
| 1 | 1 | **Atividades e tarefas** | 216.5d | 2022-01-03 A | 2022-10-03 |  | 7% | 201.28d | 2022-01-03 | 2022-09-15 | 202.75d | 0d |  |  |  | 2860h | 292.5h | 76,550 | 73,950 | 5,325 |
| 2 | 1.1 | **A - Levantamento de Requisitos** | 35.5d | 2022-01-03 A | 2022-02-15 |  | 35% | 22.93d | 2022-01-03 | 2022-02-15 | 35.5d | 181d |  |  |  | 611h | 278.5h | 10,900 | 10,900 | 5,075 |
| 3 | 1.1.1 | A1 - Reunião inicio do projeto | 12d | 2022-01-03 A | 2022-01-19 |  | 75% | 3d | 2022-01-03 | 2022-01-19 | 12d | 203d | 0d |  | Gestor do projeto; Coordenador SI; Coordenador TI | 264h | 208h | 4,950 | 4,950 | 3,900 |
| 4 | 1.1.2 | A2 - SI e TI existentes | 13d | 2022-01-07 A | 2022-01-26 | 3SS+5d | 36% | 8.38d | 2022-01-07 | 2022-01-26 | 13d | 10.25d | 0.12d |  | Consultor [50%]; Equipa do projeto [50%]; Analista [50%] | 156h | 55.5h | 2,600 | 2,600 | 925 |
| 5 | 1.1.3 | A3 - Processos | 5d | 2022-01-26 A | 2022-02-02 | 4 | 25% | 3.75d | 2022-01-26 | 2022-02-02 | 5d | 8.38d | 0.12d |  | Consultor [50%]; Equipa do projeto [50%]; Analista [50%] | 60h | 15h | 1,000 | 1,000 | 250 |
| 6 | 1.1.4 | A4 - Tipo de informações | 5d | 2022-02-02 | 2022-02-09 | 5 |  |  | 2022-02-02 | 2022-02-09 | 5d | 8.38d | 0d |  | Consultor [50%]; Equipa do projeto [50%]; Analista [50%] | 60h |  | 1,000 | 1,000 |  |
| 7 | 1.1.5 | A5 - Recursos Humanos e Materiais | 6d | 2022-02-08 | 2022-02-15 | 5, 6FS-2.5% |  |  | 2022-02-08 | 2022-02-15 | 6d | 8.45d | 0d |  | Consultor [50%]; Equipa do projeto [50%]; Analista [50%] | 63h |  | 1,050 | 1,050 |  |
| 8 | 1.1.6 | Reuniao de encerramento | 1d | 2022-01-19 | 2022-01-20 |  |  |  | 2022-01-19 | 2022-01-20 | 1d | 201.88d |  |  | Gestor do projeto; Gestor topo [0.1%] | 8h |  | 300 | 300 |  |
| 9 | 1.2 | **B - Análise** | 74.12d | 2022-01-20 | 2022-04-26 |  |  |  | 2022-01-20 | 2022-04-20 | 69.67d | 29.32d |  |  |  | 540.5h |  | 9,175 | 9,175 |  |
| 10 | 1.2.1 | B1 - Análise preliminar dos requisitos | 15d | 2022-02-15 | 2022-03-08 | 7 |  |  | 2022-02-15 | 2022-03-08 | 15d | 8.45d | 0d |  | Consultor [50%]; Equipa do projeto [50%]; Analista [50%] | 180h |  | 3,000 | 3,000 |  |
| 11 | 1.2.2 | B2 - Sleção dos dados | 7d | 2022-03-08 | 2022-03-17 | 10 |  |  | 2022-03-08 | 2022-03-17 | 7d | 8.45d | 0d |  | Consultor [50%]; Equipa do projeto [50%]; Analista [50%] | 84h |  | 1,400 | 1,400 |  |
| 12 | 1.2.3 | B3 - Análise Preliminar dos dados | 7d | 2022-03-17 | 2022-03-28 | 11FS-1% |  |  | 2022-03-17 | 2022-03-28 | 7d | 8.45d | 0d |  | Consultor [50%]; Equipa do projeto [50%]; Analista [50%] | 84h |  | 1,400 | 1,400 |  |
| 13 | 1.2.4 | B4 - Segmentação dos dados | 10d | 2022-03-29 | 2022-04-12 | 11, 12FS+2.5% |  |  | 2022-03-29 | 2022-04-12 | 10d | 7.33d | 4.45d |  | Consultor [50%]; Equipa do projeto [50%]; Analista [50%] | 120h |  | 2,000 | 2,000 |  |
| 14 | 1.2.5 | B5 - Base de dados da informação | 5d | 2022-04-19 | 2022-04-26 | 13 |  |  | 2022-04-12 | 2022-04-20 | 5d | 2.88d | 0d | finish no earlier than 2022-04-26 | Consultor [50%]; Equipa do projeto [50%]; Analista [50%] | 64.5h |  | 1,075 | 1,075 |  |
| 15 | 1.2.6 | Reuniao de encerramento | 1d | 2022-01-20 | 2022-01-21 |  |  |  | 2022-01-20 | 2022-01-21 | 1d | 200.75d |  |  | Gestor do projeto; Gestor topo [0.1%] | 8h |  | 300 | 300 |  |
| 16 | 1.3 | **C - Desenvolvimento** | 140.25d | 2022-01-21 | 2022-07-19 |  |  |  | 2022-01-21 | 2022-07-19 | 140.25d |  |  |  |  | 1020.5h |  | 29,675 | 29,675 |  |
| 17 | 1.3.1 | C1 - Conceber estrutura de BD | 44d | 2022-04-27 | 2022-06-27 | 14 |  |  | 2022-04-20 | 2022-06-21 | 44d | 2.88d | 0d |  | Consultor [50%]; Equipa do projeto [50%]; Analista [50%]; Servidor Base Dados | 528h |  | 18,800 | 18,800 |  |
| 18 | 1.3.2 | C2 - Preparar estrutura de integração | 15d | 2022-05-31 | 2022-06-21 | 14, 17FS-5% |  |  | 2022-05-24 | 2022-06-14 | 15d | 2.88d | 0d |  | Consultor [50%]; Sistema Backup; Equipa do projeto [50%]; Analista [50%] | 180h |  | 5,500 | 5,500 |  |
| 19 | 1.3.3 | C3 - Design do produto | 20d | 2022-06-21 | 2022-07-19 | 18 |  |  | 2022-06-14 | 2022-07-12 | 20d | 2.88d | 0d |  | Consultor [50%]; Equipa do projeto [50%]; Analista [50%] | 240h |  | 4,000 | 4,000 |  |
| 20 | 1.3.4 | C4 - Usabilidade | 6d | 2022-07-19 | 2022-07-26 | 19 |  |  | 2022-07-12 | 2022-07-19 | 6d | 3d | 0d |  | Consultor [50%]; Equipa do projeto [50%]; Analista [50%] | 64.5h |  | 1,075 | 1,075 |  |
| 21 | 1.3.5 | Reuniao de encerramento | 1d? | 2022-02-08 | 2022-02-09 |  |  |  | 2022-02-08 | 2022-02-09 | 1d? | 186.12d |  |  | Gestor do projeto; Gestor topo [0.1%] | 8h |  | 300 | 300 |  |
| 22 | 1.4 | **D - Implementação** | 187.25d | 2022-01-24 A | 2022-09-16 |  | 1% | 185.29d | 2022-01-24 | 2022-08-31 | 173.5d | 12.38d |  |  |  | 548h | 6h | 24,300 | 21,700 | 100 |
| 23 | 1.4.1 | D1 - Implementação do SI | 5d | 2022-07-26 | 2022-08-02 | 20 |  |  | 2022-07-19 | 2022-07-26 | 5d | 3d | 0.12d |  | Consultor [50%]; Equipa do projeto [50%]; Analista [50%]; Sistema Gestao de Base de Dados | 60h |  | 16,000 | 16,000 |  |
| 24 | 1.4.2 | D2 - Integração | 5d | 2022-08-04 | 2022-08-11 | 23FS+2d |  |  | 2022-07-28 | 2022-08-04 | 5d | 2.88d | 0.12d |  | Consultor [50%]; Equipa do projeto [50%]; Analista [50%] | 60h |  | 1,000 | 1,000 |  |
| 25 | 1.4.3 | D3 - Testes | 20d | 2022-08-11 A | 2022-09-08 | 24 | 3% | 19.5d | 2022-08-04 | 2022-08-15 | 7d | 0d |  |  | Consultor [50%]; Equipa do projeto [50%]; Analista [50%] | 240h | 6h | 4,000 | 1,400 | 100 |
| 26 | 1.4.4 | D4 - Formação | 16.88d | 2022-08-26 | 2022-09-16 | 24, 25FS-5% |  |  | 2022-08-10 | 2022-08-31 | 16.88d | 0d |  |  | Consultor [50%]; Equipa do projeto [50%]; Analista [50%] | 180h |  | 3,000 | 3,000 |  |
| 27 | 1.4.5 | Reuniao de encerramento | 1d | 2022-01-24 | 2022-01-25 |  |  |  | 2022-01-24 | 2022-01-25 | 1d | 198.5d |  |  | Gestor do projeto; Gestor topo [0.1%] | 8h |  | 300 | 300 |  |

| ID | WBS | Task | Duration | Start | Finish | Predecessors | Complete | Remaining | Baseline start | Baseline finish | Baseline duration | Total slack | Resources | Work | Actual work | Cost | Baseline cost | Actual cost |
| --- | --- | --- | --- | --- | --- | --- | --- | --- | --- | --- | --- | --- | --- | --- | --- | --- | --- | --- |
| 28 | 1.5 | **E - Encerramento** | 216.5d | 2022-01-03 A | 2022-10-03 |  | 8% | 198.46d | 2022-01-03 | 2022-09-15 | 202.75d | 0d |  | 140h | 8h | 2,500 | 2,500 | 150 |
| 29 | 1.5.1 | E1 - Avaliação do projeto | 7d | 2022-09-16 | 2022-09-27 | 26 |  |  | 2022-08-31 | 2022-09-09 | 7d | 0d | Consultor [50%]; Equipa do projeto [50%]; Analista [50%] | 84h |  | 1,400 | 1,400 |  |
| 30 | 1.5.2 | E2 - Validação | 4d | 2022-09-27 | 2022-10-03 | 29 |  |  | 2022-09-09 | 2022-09-15 | 4d | 0d | Consultor [50%]; Equipa do projeto [50%]; Analista [50%] | 48h |  | 800 | 800 |  |
| 31 | 1.5.3 | Reuniao de encerramento | 1d | 2022-01-03 A | 2022-01-04 |  | 99% | 0d | 2022-01-03 | 2022-01-04 | 1d | 215.38d | Gestor do projeto; Gestor topo [0.1%] | 8h | 8h | 300 | 300 | 150 |
